# task1

Schedule from MS Project, 2021-03-01 to 2021-09-14, costs in ₽.

## Calendars

- Стандартный: Mon-Fri 09:00-13:00, 14:00-18:00; Sat-Sun off. Exceptions (off unless hours are given): 2021-03-08 (8 марта, recurring), 2021-05-01 to 2021-05-03 (День труда), 2021-05-08 to 2021-05-10 (День Победы), 2021-06-12 to 2021-06-14 (День России).

## Resources

| Resource | Group | Rate | Cost per use |
| --- | --- | --- | --- |
| Ведущий программист | Программирование | 10 | 100 |
| Программист#1 | Программирование | 7 | 50 |
| Программист#2 | Программирование | 7 | 50 |
| Программист#3 | Программирование | 7 | 50 |
| Программист#4 | Программирование | 7 | 50 |
| Системный аналитик | Анализ | 20 | 300 |
| Художник-дизайнер | Дизайн | 8 | 70 |
| Технический писатель | Документация | 5 | 20 |
| Web-дизайнер | Internet | 7 | 50 |
| 3D аниматор | Дизайн | 8 | 70 |
| Мультимедиа-корреспондент | М-медиа | 3 | 20 |
| Наборщик данных#1 | Ввод данных | 2 | 10 |
| Наборщик данных#2 | Ввод данных | 2 | 10 |
| Наборщик данных#3 | Ввод данных | 2 | 10 |
| Наборщик данных#4 | Ввод данных | 2 | 10 |
| Наборщик данных#5 | Ввод данных | 2 | 10 |
| Сервер | Оборудование | 2 |  |

## Schedule

| ID | WBS | Task | Type | Duration | Start | Finish | Predecessors | Total slack | Resources | Work | Cost |
| --- | --- | --- | --- | --- | --- | --- | --- | --- | --- | --- | --- |
| 1 | 1 | **task** |  | 138d | 2021-03-01 | 2021-09-14 |  | 0d |  | 9281h | 47,902 |
| 2 | 1.1 | Начало проекта | milestone, manual | 0w | 2021-03-01 | 2021-03-01 |  |  |  |  |  |
| 3 | 1.2 | **Создание интерфейса** |  | 110d | 2021-03-01 | 2021-08-05 | 2 |  |  | 560h | 5,550 |
| 4 | 1.2.1 | **Разработка дизайна интерфейса** |  | 25d | 2021-03-01 | 2021-04-05 |  |  |  | 320h | 2,770 |
| 5 | 1.2.1.1 | Разработка 2D графических элементов | manual | 3w | 2021-03-01 | 2021-03-22 |  |  | Художник-дизайнер | 120h | 1,030 |
| 6 | 1.2.1.2 | Разработка 3D графических элементов | manual | 2w | 2021-03-01 | 2021-03-15 | 5SS |  | 3D аниматор | 80h | 710 |
| 7 | 1.2.1.3 | Создание заставки | manual | 3w | 2021-03-16 | 2021-04-05 | 6 |  | 3D аниматор | 120h | 1,030 |
| 8 | 1.2.2 | Программирование интерфейса | manual | 3w | 2021-07-16 | 2021-08-05 | 4, 13 |  | Программист#3; Программист#4 | 240h | 1,780 |
| 9 | 1.3 | **Построение базы объектов** |  | 85d | 2021-03-23 | 2021-07-22 |  |  | Сервер | 5633h | 15,356 |
| 10 | 1.3.1 | Анализ и построение структуры базы объектов | manual | 2w | 2021-03-23 | 2021-04-05 |  |  | Системный аналитик | 80h | 1,900 |
| 11 | 1.3.2 | Программирование средств обработки базы объектов | manual | 3w | 2021-04-06 | 2021-04-26 | 10 |  | Программист#3; Программист#4 | 240h | 1,780 |
| 12 | 1.3.3 | Наполнение базы объектов | manual | 12w | 2021-04-27 | 2021-07-22 | 11 |  | Наборщик данных#1; Наборщик данных#2; Наборщик данных#3; Наборщик данных#4; Наборщик данных#5 | 2400h | 4,850 |
| 13 | 1.4 | **Создание ядра GIS** |  | 95d | 2021-03-01 | 2021-07-15 |  |  |  | 1880h | 18,680 |
| 14 | 1.4.1 | Анализ и проектирование ядра | manual | 3w | 2021-03-01 | 2021-03-22 |  |  | Ведущий программист; Системный аналитик | 240h | 4,000 |
| 15 | 1.4.2 | Создание модели ядра | manual | 5w | 2021-03-23 | 2021-04-26 | 14 |  | Ведущий программист; Программист#1 | 400h | 3,550 |
| 16 | 1.4.3 | Тестирование модели ядра | manual | 1w | 2021-04-27 | 2021-05-04 | 15 |  | Программист#1 | 40h | 330 |
| 17 | 1.4.4 | Создание рабочей версии ядра | manual | 10w | 2021-05-05 | 2021-07-15 | 16 |  | Программист#1; Программист#2; Ведущий программист | 1200h | 9,800 |
| 18 | 1.5 | Создание мультимедиа - наполнения | manual | 6w | 2021-04-06 | 2021-05-19 | 4 |  | Мультимедиа-корреспондент | 240h | 740 |
| 19 | 1.6 | Создание справочной системы | manual | 2w | 2021-08-17 | 2021-08-30 | 8 |  | Технический писатель | 80h | 420 |
| 20 | 1.7 | **Создание руководства пользователя** |  | 17d | 2021-07-23 | 2021-08-16 |  |  |  | 160h | 1,010 |
| 21 | 1.7.1 | Разработка дизайна руководства | manual | 1w | 2021-07-23 | 2021-08-05 | 8FS-10d |  | Художник-дизайнер | 40h | 390 |
| 22 | 1.7.2 | Написание руководства пользователя | manual | 3w | 2021-07-27 | 2021-08-16 | 21SS+2d |  | Технический писатель | 120h | 620 |
| 23 | 1.8 | **Создание web - сайта и поддержка** |  | 21d | 2021-07-27 | 2021-08-24 |  |  |  | 248h | 2,106 |
| 24 | 1.8.1 | Разработка структуры сайта | manual | 1d | 2021-07-27 | 2021-07-27 | 22SS |  | Web-дизайнер | 8h | 106 |
| 25 | 1.8.2 | Разработка дизайна сайта | manual | 1w | 2021-07-28 | 2021-08-03 | 24 |  | Web-дизайнер; Художник-дизайнер; 3D аниматор | 120h | 1,110 |
| 26 | 1.8.3 | Наполнение сайта | manual | 3w | 2021-08-04 | 2021-08-24 | 25 |  | Web-дизайнер | 120h | 890 |
| 27 | 1.9 | Тестирование сайта | manual | 4w | 2021-08-18 | 2021-09-14 | 23FS-1w |  | Ведущий программист; Программист#1; Программист#2 | 480h | 4,040 |
| 28 | 1.10 | Сдача сайта в эксплуатацию | milestone | 0w | 2021-09-14 | 2021-09-14 | 27 | 0d |  |  |  |

Notes:
- 1: Команда разработчиков из 16 человек занимается созданием карты / города на основе собственного модуля отображения. Проект должен быть завершен в течение / 6 месяцев. Бюджет проекта: 50 000 рублей.
