# task1

Schedule from MS Project, 2021-03-01 to 2021-07-27, status date 2021-05-10, costs in ₽, A marks actual dates.

## Calendars

- Стандартный: Mon-Fri 09:00-13:00, 14:00-18:00; Sat-Sun off. Exceptions (off unless hours are given): 2021-03-08 (8 марта, recurring), 2021-05-01 to 2021-05-03 (День труда), 2021-05-08 to 2021-05-10 (День Победы), 2021-06-12 to 2021-06-14 (День России).

## Resources

| Resource | Group | Rate | Cost per use |
| --- | --- | --- | --- |
| Ведущий программист | Программирование | 10 | 100 |
| Программист#1 | Программирование | 7 | 50 |
| Программист#2 | Программирование | 7 | 50 |
| Программист#3 | Программирование | 7 | 50 |
| Программист#4 | Программирование | 7 | 50 |
| Системный аналитик | Анализ | 20 | 300 |
| Художник-дизайнер | Дизайн | 8 | 70 |
| Технический писатель | Документация | 5 | 20 |
| Web-дизайнер | Internet | 7 | 50 |
| 3D аниматор | Дизайн | 8 | 70 |
| Мультимедиа-корреспондент | М-медиа | 3 | 20 |
| Наборщик данных#1 | Ввод данных | 2 | 10 |
| Наборщик данных#2 | Ввод данных | 2 | 10 |
| Наборщик данных#3 | Ввод данных | 2 | 10 |
| Наборщик данных#4 | Ввод данных | 2 | 10 |
| Наборщик данных#5 | Ввод данных | 2 | 10 |
| Сервер | Оборудование | 2 |  |

## Schedule

| ID | WBS | Task | Type | Duration | Start | Finish | Complete | Remaining | Baseline start | Baseline finish | Baseline duration | Total slack | Constraint | Resources | Work | Actual work | Cost | Baseline cost | Actual cost |
| --- | --- | --- | --- | --- | --- | --- | --- | --- | --- | --- | --- | --- | --- | --- | --- | --- | --- | --- | --- |
| 1 | 1 | **task** |  | 102.25d | 2021-03-01 09:00 A | 2021-07-27 11:00 | 49% | 51.7d | 2021-03-01 09:00 | 2021-07-22 13:00 | 99.5d | 0d |  |  | 9016h | 3274.48h | 49,993.57 | 45,699 | 23,677.1 |
| 2 | 1.1 | **Совещание** |  | 96.12d | 2021-03-03 09:00 A | 2021-07-21 10:00 | 48% | 50.35d | 2021-03-03 09:00 | 2021-07-21 10:00 | 96.12d | 0d |  |  | 146h | 69h | 1,285 | 1,281 | 603 |
| 3 | 1.1.1 | Совещание 1 | manual | 1h | 2021-03-03 09:00 A | 2021-03-03 10:00 A | 100% |  | 2021-03-03 09:00 | 2021-03-03 10:00 | 1h |  | start no earlier than 2021-03-03 09:00 | 3D аниматор; Web-дизайнер; Ведущий программист; Мультимедиа-корреспондент; Системный аналитик; Технический писатель; Художник-дизайнер | 7h | 7h | 61 | 61 | 61 |
| 4 | 1.1.2 | Совещание 2 | manual | 1h | 2021-03-10 09:00 A | 2021-03-10 10:00 A | 100% |  | 2021-03-10 09:00 | 2021-03-10 10:00 | 1h |  | start no earlier than 2021-03-10 09:00 | 3D аниматор; Web-дизайнер; Ведущий программист; Мультимедиа-корреспондент; Системный аналитик; Технический писатель; Художник-дизайнер | 7h | 7h | 61 | 61 | 61 |
| 5 | 1.1.3 | Совещание 3 | manual | 1h | 2021-03-17 09:00 A | 2021-03-17 10:00 A | 100% |  | 2021-03-17 09:00 | 2021-03-17 10:00 | 1h |  | start no earlier than 2021-03-17 09:00 | 3D аниматор; Web-дизайнер; Ведущий программист; Мультимедиа-корреспондент; Системный аналитик; Технический писатель; Художник-дизайнер | 7h | 7h | 61 | 61 | 61 |
| 6 | 1.1.4 | Совещание 4 | manual | 1h | 2021-03-24 09:00 A | 2021-03-24 10:00 A | 100% |  | 2021-03-24 09:00 | 2021-03-24 10:00 | 1h |  | start no earlier than 2021-03-24 09:00 | 3D аниматор; Web-дизайнер; Ведущий программист; Мультимедиа-корреспондент; Системный аналитик; Технический писатель; Художник-дизайнер | 7h | 7h | 61 | 61 | 61 |
| 7 | 1.1.5 | Совещание 5 | manual | 1h | 2021-03-31 09:00 A | 2021-03-31 10:00 A | 100% |  | 2021-03-31 09:00 | 2021-03-31 10:00 | 1h |  | start no earlier than 2021-03-31 09:00 | 3D аниматор; Web-дизайнер; Ведущий программист; Мультимедиа-корреспондент; Системный аналитик; Технический писатель; Художник-дизайнер | 7h | 7h | 61 | 61 | 61 |
| 8 | 1.1.6 | Совещание 6 | manual | 1h | 2021-04-07 09:00 A | 2021-04-07 10:00 A | 100% |  | 2021-04-07 09:00 | 2021-04-07 10:00 | 1h |  | start no earlier than 2021-04-07 09:00 | 3D аниматор; Web-дизайнер; Ведущий программист [50%]; Мультимедиа-корреспондент; Системный аналитик; Технический писатель; Художник-дизайнер | 6.5h | 6.5h | 56 | 61 | 56 |
| 9 | 1.1.7 | Совещание 7 | manual | 1h | 2021-04-14 09:00 A | 2021-04-14 10:00 A | 100% |  | 2021-04-14 09:00 | 2021-04-14 10:00 | 1h |  | start no earlier than 2021-04-14 09:00 | 3D аниматор; Web-дизайнер; Ведущий программист [50%]; Мультимедиа-корреспондент; Системный аналитик; Технический писатель; Художник-дизайнер | 6.5h | 6.5h | 56 | 61 | 56 |
| 10 | 1.1.8 | Совещание 8 | manual | 1h | 2021-04-21 09:00 A | 2021-04-21 10:00 A | 100% |  | 2021-04-21 09:00 | 2021-04-21 10:00 | 1h |  | start no earlier than 2021-04-21 09:00 | 3D аниматор; Web-дизайнер; Ведущий программист; Мультимедиа-корреспондент; Системный аналитик; Технический писатель; Художник-дизайнер | 7h | 7h | 62 | 61 | 62 |
| 11 | 1.1.9 | Совещание 9 | manual | 1h | 2021-04-28 09:00 A | 2021-04-28 10:00 A | 100% |  | 2021-04-28 09:00 | 2021-04-28 10:00 | 1h |  | start no earlier than 2021-04-28 09:00 | 3D аниматор; Web-дизайнер; Ведущий программист; Мультимедиа-корреспондент; Системный аналитик; Технический писатель; Художник-дизайнер | 7h | 7h | 62 | 61 | 62 |
| 12 | 1.1.10 | Совещание 10 | manual | 1h | 2021-05-05 09:00 A | 2021-05-05 10:00 A | 100% |  | 2021-05-05 09:00 | 2021-05-05 10:00 | 1h |  | start no earlier than 2021-05-05 09:00 | 3D аниматор; Web-дизайнер; Ведущий программист; Мультимедиа-корреспондент; Системный аналитик; Технический писатель; Художник-дизайнер | 7h | 7h | 62 | 61 | 62 |
| 13 | 1.1.11 | Совещание 11 | manual | 1h | 2021-05-12 09:00 | 2021-05-12 10:00 |  |  | 2021-05-12 09:00 | 2021-05-12 10:00 | 1h |  | start no earlier than 2021-05-12 09:00 | 3D аниматор; Web-дизайнер; Ведущий программист; Мультимедиа-корреспондент; Системный аналитик; Технический писатель; Художник-дизайнер | 7h |  | 62 | 61 |  |
| 14 | 1.1.12 | Совещание 12 | manual | 1h | 2021-05-19 09:00 | 2021-05-19 10:00 |  |  | 2021-05-19 09:00 | 2021-05-19 10:00 | 1h |  | start no earlier than 2021-05-19 09:00 | 3D аниматор; Web-дизайнер; Ведущий программист; Мультимедиа-корреспондент; Системный аналитик; Технический писатель; Художник-дизайнер | 7h |  | 62 | 61 |  |
| 15 | 1.1.13 | Совещание 13 | manual | 1h | 2021-05-26 09:00 | 2021-05-26 10:00 |  |  | 2021-05-26 09:00 | 2021-05-26 10:00 | 1h |  | start no earlier than 2021-05-26 09:00 | 3D аниматор; Web-дизайнер; Ведущий программист; Мультимедиа-корреспондент; Системный аналитик; Технический писатель; Художник-дизайнер | 7h |  | 62 | 61 |  |
| 16 | 1.1.14 | Совещание 14 | manual | 1h | 2021-06-02 09:00 | 2021-06-02 10:00 |  |  | 2021-06-02 09:00 | 2021-06-02 10:00 | 1h |  | start no earlier than 2021-06-02 09:00 | 3D аниматор; Web-дизайнер; Ведущий программист; Мультимедиа-корреспондент; Системный аналитик; Технический писатель; Художник-дизайнер | 7h |  | 62 | 61 |  |
| 17 | 1.1.15 | Совещание 15 | manual | 1h | 2021-06-09 09:00 | 2021-06-09 10:00 |  |  | 2021-06-09 09:00 | 2021-06-09 10:00 | 1h |  | start no earlier than 2021-06-09 09:00 | 3D аниматор; Web-дизайнер; Ведущий программист; Мультимедиа-корреспондент; Системный аналитик; Технический писатель; Художник-дизайнер | 7h |  | 62 | 61 |  |
| 18 | 1.1.16 | Совещание 16 | manual | 1h | 2021-06-16 09:00 | 2021-06-16 10:00 |  |  | 2021-06-16 09:00 | 2021-06-16 10:00 | 1h |  | start no earlier than 2021-06-16 09:00 | 3D аниматор; Web-дизайнер; Ведущий программист; Мультимедиа-корреспондент; Системный аналитик; Технический писатель; Художник-дизайнер | 7h |  | 62 | 61 |  |
| 19 | 1.1.17 | Совещание 17 | manual | 1h | 2021-06-23 09:00 | 2021-06-23 10:00 |  |  | 2021-06-23 09:00 | 2021-06-23 10:00 | 1h |  | start no earlier than 2021-06-23 09:00 | 3D аниматор; Web-дизайнер; Ведущий программист; Мультимедиа-корреспондент; Системный аналитик; Технический писатель; Художник-дизайнер | 7h |  | 62 | 61 |  |
| 20 | 1.1.18 | Совещание 18 | manual | 1h | 2021-06-30 09:00 | 2021-06-30 10:00 |  |  | 2021-06-30 09:00 | 2021-06-30 10:00 | 1h |  | start no earlier than 2021-06-30 09:00 | 3D аниматор; Web-дизайнер; Ведущий программист; Мультимедиа-корреспондент; Системный аналитик; Технический писатель; Художник-дизайнер | 7h |  | 62 | 61 |  |
| 21 | 1.1.19 | Совещание 19 | manual | 1h | 2021-07-07 09:00 | 2021-07-07 10:00 |  |  | 2021-07-07 09:00 | 2021-07-07 10:00 | 1h |  | start no earlier than 2021-07-07 09:00 | 3D аниматор; Web-дизайнер; Ведущий программист; Мультимедиа-корреспондент; Системный аналитик; Технический писатель; Художник-дизайнер | 7h |  | 62 | 61 |  |
| 22 | 1.1.20 | Совещание 20 | manual | 1h | 2021-07-14 09:00 | 2021-07-14 10:00 |  |  | 2021-07-14 09:00 | 2021-07-14 10:00 | 1h |  | start no earlier than 2021-07-14 09:00 | 3D аниматор; Web-дизайнер; Ведущий программист; Мультимедиа-корреспондент; Системный аналитик; Технический писатель; Художник-дизайнер | 7h |  | 62 | 61 |  |
| 23 | 1.1.21 | Совещание 21 | manual | 1h | 2021-07-21 09:00 | 2021-07-21 10:00 |  |  | 2021-07-21 09:00 | 2021-07-21 10:00 | 1h |  | start no earlier than 2021-07-21 09:00 | 3D аниматор; Web-дизайнер; Ведущий программист; Мультимедиа-корреспондент; Системный аналитик; Технический писатель; Художник-дизайнер | 7h |  | 62 | 61 |  |
| 24 | 1.2 | Начало проекта | milestone, manual | 0w | 2021-03-01 09:00 A | 2021-03-01 09:00 A | 100% |  | 2021-03-01 09:00 | 2021-03-01 09:00 | 0w |  |  |  |  |  |  |  |  |

Notes:
- 1: Команда разработчиков из 16 человек занимается созданием карты / города на основе собственного модуля отображения. Проект должен быть завершен в течение / 6 месяцев. Бюджет проекта: 50 000 рублей.

| ID | WBS | Task | Type | Duration | Start | Finish | Predecessors | Complete | Remaining | Baseline start | Baseline finish | Baseline duration | Total slack | Free slack | Constraint | Resources | Work | Actual work | Cost | Baseline cost | Actual cost |
| --- | --- | --- | --- | --- | --- | --- | --- | --- | --- | --- | --- | --- | --- | --- | --- | --- | --- | --- | --- | --- | --- |
| 25 | 1.3 | **Создание интерфейса** |  | 83.12d | 2021-03-01 09:00 A | 2021-06-30 10:00 | 24 | 75% | 20.78d | 2021-03-01 09:00 | 2021-06-25 12:00 | 80.38d | 0d |  |  |  | 600h | 360h | 5,870 | 5,550 | 3,840 |
| 26 | 1.3.1 | **Разработка дизайна интерфейса** |  | 25.62d | 2021-03-01 09:00 A | 2021-04-06 15:00 A |  | 100% |  | 2021-03-01 09:00 | 2021-04-06 15:00 | 25.62d |  |  |  |  | 360h | 360h | 3,090 | 2,770 | 3,090 |
| 27 | 1.3.1.1 | Разработка 2D графических элементов | manual | 4w | 2021-03-01 09:00 A | 2021-03-30 13:00 A |  | 100% |  | 2021-03-01 09:00 | 2021-03-23 12:00 | 3w |  |  |  | Художник-дизайнер | 160h | 160h | 1,350 | 1,030 | 1,350 |
| 28 | 1.3.1.2 | Разработка 3D графических элементов | manual | 2w | 2021-03-01 09:00 A | 2021-03-16 11:00 A | 27SS | 100% |  | 2021-03-01 09:00 | 2021-03-16 11:00 | 2w |  |  |  | 3D аниматор | 80h | 80h | 710 | 710 | 710 |
| 29 | 1.3.1.3 | Создание заставки | manual | 3w | 2021-03-16 11:00 A | 2021-04-06 15:00 A | 28 | 100% |  | 2021-03-16 11:00 | 2021-04-06 15:00 | 3w |  |  |  | 3D аниматор | 120h | 120h | 1,030 | 1,030 | 1,030 |
| 30 | 1.3.2 | Программирование интерфейса | manual | 3w | 2021-06-08 10:00 | 2021-06-30 10:00 | 26, 35 |  |  | 2021-06-03 12:00 | 2021-06-25 12:00 | 3w |  |  |  | Программист#3; Программист#4 | 240h |  | 1,780 | 1,780 |  |
| 31 | 1.4 | **Построение базы объектов** |  | 80.25d | 2021-03-23 12:00 A | 2021-07-16 15:00 |  | 40% | 47.77d | 2021-03-23 12:00 | 2021-07-16 15:00 | 80.25d | 6.62d |  |  | Сервер | 5445h | 1895.15h | 15,538.57 | 14,840 | 7,293.42 |
| 32 | 1.4.1 | Анализ и построение структуры базы объектов | manual | 2w | 2021-03-23 12:00 A | 2021-04-06 15:00 A |  | 100% |  | 2021-03-23 12:00 | 2021-04-06 15:00 | 2w |  |  |  | Системный аналитик | 80h | 80h | 1,900 | 1,900 | 1,900 |
| 33 | 1.4.2 | Программирование средств обработки базы объектов | manual | 2w | 2021-04-06 15:00 A | 2021-04-20 15:00 A | 32 | 100% |  | 2021-04-06 15:00 | 2021-04-20 15:00 | 2w |  |  |  | Программист#3; Программист#4; Программист#2 | 202h | 202h | 1,564 | 1,564 | 1,564 |
| 34 | 1.4.3 | Наполнение базы объектов |  | 12w | 2021-04-20 15:00 A | 2021-07-16 15:00 | 33 | 21% | 9.53w | 2021-04-20 15:00 | 2021-07-16 15:00 | 12w | 6.62d |  |  | Наборщик данных#1; Наборщик данных#2; Наборщик данных#3; Наборщик данных#4 | 2400h | 495h | 5,320 | 4,850 | 1,129 |
| 35 | 1.5 | **Создание ядра GIS** |  | 68.12d | 2021-03-01 09:00 A | 2021-06-08 10:00 |  | 70% | 20.42d | 2021-03-01 09:00 | 2021-06-03 12:00 | 65.38d | 2.88d | 0d |  |  | 1662h | 766.33h | 19,199 | 16,462 | 11,038.68 |
| 36 | 1.5.1 | Анализ и проектирование ядра | manual | 3w | 2021-03-01 09:00 A | 2021-03-23 12:00 A |  | 100% |  | 2021-03-01 09:00 | 2021-03-23 12:00 | 3w |  |  |  | Ведущий программист; Системный аналитик | 240h | 240h | 4,000 | 4,000 | 4,000 |
| 37 | 1.5.2 | Создание модели ядра | manual | 4.72w | 2021-03-23 12:00 A | 2021-04-26 15:00 A | 36 | 100% |  | 2021-03-23 12:00 | 2021-04-13 12:00 | 3w |  |  |  | Ведущий программист; Программист#1; Программист#2 | 351h | 351h | 3,034 | 2,990 | 3,034 |
| 38 | 1.5.3 | Тестирование модели ядра | manual | 1.2w | 2021-04-26 15:00 A | 2021-05-05 15:00 A | 37 | 100% |  | 2021-04-13 12:00 | 2021-04-20 12:00 | 1w |  |  |  | Программист#1 | 48h | 48h | 1,886 | 330 | 1,886 |
| 39 | 1.5.4 | Создание рабочей версии ядра |  | 4.5w | 2021-05-05 15:00 A | 2021-06-08 10:00 | 38 | 11% | 4.03w | 2021-04-20 12:00 | 2021-06-03 12:00 | 6w | 2.88d |  |  | Программист#1; Программист#2; Ведущий программист; Программист#3; Программист#4 | 1023h | 127.33h | 9,279 | 8,142 | 1,418.68 |
| 40 | 1.6 | Создание мультимедиа - наполнения | manual | 6w | 2021-04-06 15:00 A | 2021-05-21 13:00 | 26 | 60% | 2.4w | 2021-04-06 15:00 | 2021-05-21 13:00 | 6w |  |  |  | Мультимедиа-корреспондент | 240h | 144h | 740 | 740 | 452 |
| 41 | 1.7 | Создание справочной системы | manual | 2w | 2021-07-02 16:00 | 2021-07-26 11:00 | 30 |  |  | 2021-07-06 16:00 | 2021-07-20 18:00 | 2w |  |  |  | Технический писатель | 80h |  | 420 | 420 |  |
| 42 | 1.8 | **Создание руководства пользователя** |  | 17.75d | 2021-06-16 10:00 | 2021-07-09 17:00 |  |  |  | 2021-06-10 12:00 | 2021-07-06 16:00 | 17.38d | 0d |  |  |  | 160h |  | 1,010 | 1,010 |  |
| 43 | 1.8.1 | Разработка дизайна руководства | manual | 1w | 2021-06-16 10:00 | 2021-06-30 16:00 | 30FS-10d |  |  | 2021-06-10 12:00 | 2021-07-01 18:00 | 1w |  |  |  | Художник-дизайнер | 40h |  | 390 | 390 |  |
| 44 | 1.8.2 | Написание руководства пользователя | manual | 3w | 2021-06-18 10:00 | 2021-07-09 17:00 | 43SS+2d |  |  | 2021-06-15 12:00 | 2021-07-06 16:00 | 3w |  |  |  | Технический писатель | 120h |  | 620 | 620 |  |
| 45 | 1.9 | **Создание web - сайта и поддержка** |  | 22.12d | 2021-06-18 10:00 | 2021-07-20 11:00 |  |  |  | 2021-06-15 12:00 | 2021-07-15 13:00 | 22.12d | 0d |  |  |  | 248h |  | 2,106 | 2,106 |  |
| 46 | 1.9.1 | Разработка структуры сайта | manual | 1d | 2021-06-18 10:00 | 2021-06-21 11:00 | 44SS |  |  | 2021-06-15 12:00 | 2021-06-16 13:00 | 1d |  |  |  | Web-дизайнер | 8h |  | 106 | 106 |  |
| 47 | 1.9.2 | Разработка дизайна сайта | manual | 1w | 2021-06-21 11:00 | 2021-06-28 13:00 | 46 |  |  | 2021-06-16 14:00 | 2021-06-23 16:00 | 1w |  |  |  | Web-дизайнер; Художник-дизайнер; 3D аниматор | 120h |  | 1,110 | 1,110 |  |
| 48 | 1.9.3 | Наполнение сайта | manual | 3w | 2021-06-28 14:00 | 2021-07-20 11:00 | 47 |  |  | 2021-06-23 16:00 | 2021-07-15 13:00 | 3w |  |  |  | Web-дизайнер | 120h |  | 890 | 890 |  |
| 49 | 1.10 | Тестирование сайта | manual | 2w | 2021-07-13 11:00 | 2021-07-27 11:00 | 45FS-1w |  |  | 2021-07-08 14:00 | 2021-07-22 13:00 | 2w |  |  |  | Ведущий программист; Программист#1; Программист#2; Программист#3; Программист#4 | 395h |  | 3,375 | 3,290 |  |
| 50 | 1.11 | Сдача сайта в эксплуатацию | milestone | 0w | 2021-07-27 11:00 | 2021-07-27 11:00 | 49, 34 |  |  | 2021-07-22 13:00 | 2021-07-22 13:00 | 0w | 0d |  |  |  |  |  |  |  |  |
| 51 | 1.12 | Повышение квалификации | manual | 2w | 2021-04-05 09:00 A | 2021-04-16 18:00 A |  | 100% |  |  |  |  |  |  | start no earlier than 2021-04-05 09:00 | Ведущий программист [50%] | 40h | 40h | 450 |  | 450 |
